# PF-01_cronograma

How a schedule from MS Project XML changed from version to version. A marks actual dates.

## Version 1 (saved 2026-10-11, file PF-01_cronograma.xml)

Note of the change: Merge pull request #18 from josecaychoa/docs/3-cronograma

| ID | WBS | Task | Duration | Start | Finish | Predecessors | Complete | Total float | Constraint |
| --- | --- | --- | --- | --- | --- | --- | --- | --- | --- |
| 1 | 1 | **1 Gestión** | 33d | 2026-10-10 A | 2026-11-23 |  | 50% | 0d |  |
| 2 |  | 1.1 Acta y alcance | 2d | 2026-10-10 A | 2026-10-11 A |  | 100% |  |  |
| 3 | 1.2 | **1.2 Plan y línea base en Project** | 3d | 2026-10-11 A | 2026-10-13 |  | 33% | 13d |  |
| 4 |  | EDT, Gantt y plan GitHub | 1d | 2026-10-11 A | 2026-10-11 A | 2 | 100% |  |  |
| 5 |  | Plan aprobado | 0d | 2026-10-11 A | 2026-10-11 A | 4 | 100% |  |  |
| 6 |  | Línea base, repositorio y plan GitHub | 2d | 2026-10-12 | 2026-10-13 | 5 |  | 13d |  |
| 7 |  | 1.3 Cierre y desvíos | 1d | 2026-11-23 | 2026-11-23 | 20 |  | 0d |  |
| 8 |  | Listo para cierre | 0d | 2026-11-23 | 2026-11-23 | 7 |  | 0d |  |
| 9 | 2 | **2 Datos** | 6d | 2026-11-02 | 2026-11-09 |  |  | 0d |  |
| 10 |  | 2.1 Extracción | 2d | 2026-11-02 | 2026-11-03 | 6 |  | 0d | start no earlier than 2026-11-02 |
| 11 |  | 2.2 Validación | 2d | 2026-11-04 | 2026-11-05 | 10 |  | 0d |  |
| 12 |  | 2.3 Modelo de datos Oracle | 2d | 2026-11-06 | 2026-11-09 | 11 |  | 0d |  |
| 13 | 3 | **3 Análisis** | 4d | 2026-11-10 | 2026-11-13 |  |  | 0d |  |
| 14 |  | 3.1 Exploración | 1d | 2026-11-10 | 2026-11-10 | 12 |  | 0d |  |
| 15 |  | 3.2 Indicadores y matriz | 2d | 2026-11-11 | 2026-11-12 | 14 |  | 0d |  |
| 16 |  | 3.3 Validación de resultados | 1d | 2026-11-13 | 2026-11-13 | 15 |  | 0d |  |
| 17 | 4 | **4 Producto** | 5d | 2026-11-16 | 2026-11-20 |  |  | 0d |  |
| 18 |  | 4.1 Tablero Power BI | 3d | 2026-11-16 | 2026-11-18 | 16 |  | 0d |  |
| 19 |  | 4.2 Informe | 1d | 2026-11-19 | 2026-11-19 | 18 |  | 0d |  |
| 20 |  | 4.3 README | 1d | 2026-11-20 | 2026-11-20 | 19 |  | 0d |  |
| 21 | 5 | **5 Comunicación** | 3d | 2026-11-24 | 2026-11-26 |  |  | 0d |  |
| 22 |  | 5.1 Post | 2d | 2026-11-24 | 2026-11-25 | 8 |  | 0d |  |
| 23 |  | 5.2 Documento PDF | 2d | 2026-11-24 | 2026-11-25 | 8 |  | 0d |  |
| 24 |  | Publicación en LinkedIn | 0d | 2026-11-26 | 2026-11-26 | 22, 23 |  | 0d | start no earlier than 2026-11-26 |
| 25 |  | 5.3 Destacados y registro | 1d | 2026-11-26 | 2026-11-26 | 24 |  | 0d |  |

## Version 2 (saved 2026-10-11, file PF-01_cronograma.xml)

Note of the change: docs(cronograma): registra el avance real de 2.2

Last finish stays 2026-11-26. Complete tasks 3 → 6.

Added:

| ID | Task | Duration | Start | Finish | Predecessors |
| --- | --- | --- | --- | --- | --- |
| 13 | 2.4 Arquitectura y modelo de datos en Visio | 1d | 2026-10-14 | 2026-10-14 | 12 |
| 18 | 3.4 Proceso AS-IS y TO-BE en Bizagi | 1d | 2026-10-20 | 2026-10-20 | 17 |

Changed:

| ID | Task | Start | Finish | Duration | Complete | Total float | Predecessors |
| --- | --- | --- | --- | --- | --- | --- | --- |
| 1 | **1 Gestión** |  | 2026-11-23 → 2026-10-27 (-27d) | 33d → 14d | 50% → 80% | 0d → 19d |  |
| 3 | **1.2 Plan y línea base en Project** |  | 2026-10-13 → 2026-10-11 A (-2d) | 3d → 1d | 33% → 100% | 13d → none |  |
| 6 | Línea base, repositorio y plan GitHub | 2026-10-12 → 2026-10-11 A (-1d) | 2026-10-13 → 2026-10-11 A (-2d) | 2d → 1d | 0% → 100% | 13d → none |  |
| 7 | 1.3 Cierre y desvíos | 2026-11-23 → 2026-10-27 (-27d) | 2026-11-23 → 2026-10-27 (-27d) |  |  | 0d → 19d |  |
| 8 | Listo para cierre | 2026-11-23 → 2026-10-27 (-27d) | 2026-11-23 → 2026-10-27 (-27d) |  |  | 0d → 19d |  |
| 9 | **2 Datos** | 2026-11-02 → 2026-10-11 A (-22d) | 2026-11-09 → 2026-10-14 (-26d) | 6d → 4d | 0% → 40% | 0d → 26d |  |
| 10 | 2.1 Extracción | 2026-11-02 → 2026-10-11 A (-22d) | 2026-11-03 → 2026-10-11 A (-23d) | 2d → 1d | 0% → 100% | 0d → none |  |
| 11 | 2.2 Validación | 2026-11-04 → 2026-10-11 A (-24d) | 2026-11-05 → 2026-10-11 A (-25d) | 2d → 1d | 0% → 100% | 0d → none |  |
| 12 | 2.3 Modelo de datos Oracle | 2026-11-06 → 2026-10-12 (-25d) | 2026-11-09 → 2026-10-13 (-27d) |  |  | 0d → 19d |  |
| 14 | **3 Análisis** | 2026-11-10 → 2026-10-14 (-27d) | 2026-11-13 → 2026-10-20 (-24d) | 4d → 5d |  | 0d → 19d |  |
| 15 | 3.1 Exploración | 2026-11-10 → 2026-10-14 (-27d) | 2026-11-10 → 2026-10-14 (-27d) |  |  | 0d → 19d |  |
| 16 | 3.2 Indicadores y matriz | 2026-11-11 → 2026-10-15 (-27d) | 2026-11-12 → 2026-10-16 (-27d) |  |  | 0d → 19d |  |
| 17 | 3.3 Validación de resultados | 2026-11-13 → 2026-10-19 (-25d) | 2026-11-13 → 2026-10-19 (-25d) |  |  | 0d → 19d |  |
| 19 | **4 Producto** | 2026-11-16 → 2026-10-20 (-27d) | 2026-11-20 → 2026-10-26 (-25d) |  |  | 0d → 19d |  |
| 20 | 4.1 Tablero Power BI | 2026-11-16 → 2026-10-20 (-27d) | 2026-11-18 → 2026-10-22 (-27d) |  |  | 0d → 19d |  |
| 21 | 4.2 Informe | 2026-11-19 → 2026-10-23 (-27d) | 2026-11-19 → 2026-10-23 (-27d) |  |  | 0d → 19d |  |
| 22 | 4.3 README | 2026-11-20 → 2026-10-26 (-25d) | 2026-11-20 → 2026-10-26 (-25d) |  |  | 0d → 19d | 21 → 21, 13, 18 |
| 23 | **5 Comunicación** | 2026-11-24 → 2026-10-28 (-27d) |  | 3d → 22d |  |  |  |
| 24 | 5.1 Post | 2026-11-24 → 2026-10-28 (-27d) | 2026-11-25 → 2026-10-29 (-27d) |  |  | 0d → 19d |  |
| 25 | 5.2 Documento PDF | 2026-11-24 → 2026-10-28 (-27d) | 2026-11-25 → 2026-10-29 (-27d) |  |  | 0d → 19d |  |

## Version 3 (saved 2026-10-14, file PF-01_cronograma.xml)

Note of the change: Merge pull request #36 from josecaychoa/docs/24-cronograma

Last finish stays 2026-11-26. Complete tasks 6 → 8.

Changed:

| ID | Task | Start | Finish | Duration | Complete | Total float |
| --- | --- | --- | --- | --- | --- | --- |
| 9 | **2 Datos** |  | 2026-10-14 A |  | 40% → 100% | 26d → none |
| 12 | 2.3 Modelo de datos Oracle | 2026-10-12 → 2026-10-11 A (-1d) | 2026-10-13 → 2026-10-14 A (+1d) |  | 0% → 100% | 19d → none |
| 13 | 2.4 Arquitectura y modelo de datos en Visio | 2026-10-14 A | 2026-10-14 A | 1d → 0.63d | 0% → 100% | 26d → none |

## Version 4 (saved 2026-10-15, file PF-01_cronograma.mpp)

Note of the change: docs(cronograma): registra el avance real de 3.1

Last finish stays 2026-11-26. Complete tasks 8 → 9.

Changed:

| ID | Task | Start | Finish | Duration | Complete | Total float |
| --- | --- | --- | --- | --- | --- | --- |
| 14 | **3 Análisis** | 2026-10-14 → 2026-10-15 A (+1d) |  | 5d → 4d |  | 19d → 22d |
| 15 | 3.1 Exploración | 2026-10-14 → 2026-10-15 A (+1d) | 2026-10-14 → 2026-10-15 A (+1d) | 1d → 0d | 0% → 100% | 19d → none |

## Version 5 (saved 2026-10-18, file PF-01_cronograma.mpp)

Note of the change: Merge pull request #44 from josecaychoa/docs/9-cronograma

Last finish stays 2026-11-26. Complete tasks 9 → 11.

Changed:

| ID | Task | Start | Finish | Duration | Complete | Total float | Other |
| --- | --- | --- | --- | --- | --- | --- | --- |
| 1 | **1 Gestión** |  | 2026-10-27 → 2026-10-26 (-1d) | 14d → 13d |  | 19d → 20d |  |
| 7 | 1.3 Cierre y desvíos | 2026-10-27 → 2026-10-26 (-1d) | 2026-10-27 → 2026-10-26 (-1d) |  |  | 19d → 20d |  |
| 8 | Listo para cierre | 2026-10-27 → 2026-10-26 (-1d) | 2026-10-27 → 2026-10-26 (-1d) |  |  | 19d → 20d |  |
| 14 | **3 Análisis** |  | 2026-10-20 → 2026-10-19 (-1d) | 4d → 3d | 0% → 39% | 22d → 23d |  |
| 15 | 3.1 Exploración |  |  | 0d → 47min |  |  |  |
| 16 | 3.2 Indicadores y matriz | 2026-10-15 → 2026-10-18 A (+3d) | 2026-10-16 → 2026-10-18 A (+2d) | 2d → 197min | 0% → 100% | 19d → none | constraint none → finish no earlier than 2026-10-18 |
| 17 | 3.3 Validación de resultados | 2026-10-19 → 2026-10-18 A (-1d) | 2026-10-19 → 2026-10-18 A (-1d) | 1d → 60min | 0% → 100% | 19d → none |  |
| 18 | 3.4 Proceso AS-IS y TO-BE en Bizagi | 2026-10-20 → 2026-10-19 (-1d) | 2026-10-20 → 2026-10-19 (-1d) |  |  | 22d → 23d |  |
| 19 | **4 Producto** | 2026-10-20 → 2026-10-19 (-1d) | 2026-10-26 → 2026-10-23 (-3d) |  |  | 19d → 20d |  |
| 20 | 4.1 Tablero Power BI | 2026-10-20 → 2026-10-19 (-1d) | 2026-10-22 → 2026-10-21 (-1d) |  |  | 19d → 20d |  |
| 21 | 4.2 Informe | 2026-10-23 → 2026-10-22 (-1d) | 2026-10-23 → 2026-10-22 (-1d) |  |  | 19d → 20d |  |
| 22 | 4.3 README | 2026-10-26 → 2026-10-23 (-3d) | 2026-10-26 → 2026-10-23 (-3d) |  |  | 19d → 20d |  |
| 23 | **5 Comunicación** | 2026-10-28 → 2026-10-27 (-1d) |  | 22d → 23d |  |  |  |
| 24 | 5.1 Post | 2026-10-28 → 2026-10-27 (-1d) | 2026-10-29 → 2026-10-28 (-1d) |  |  | 19d → 20d |  |
| 25 | 5.2 Documento PDF | 2026-10-28 → 2026-10-27 (-1d) | 2026-10-29 → 2026-10-28 (-1d) |  |  | 19d → 20d |  |

## Version 6 (saved 2026-10-21, file PF-01_cronograma.xml)

Note of the change: Merge pull request #46 from josecaychoa/docs/25-cronograma

Last finish stays 2026-11-26. Complete tasks 11 → 12.

Changed:

| ID | Task | Start | Finish | Duration | Complete | Total float | Other |
| --- | --- | --- | --- | --- | --- | --- | --- |
| 14 | **3 Análisis** |  | 2026-10-19 → 2026-10-21 A (+2d) | 3d → 5d | 39% → 100% | 23d → none |  |
| 18 | 3.4 Proceso AS-IS y TO-BE en Bizagi | 2026-10-19 → 2026-10-18 A (-1d) | 2026-10-19 → 2026-10-21 A (+2d) | 1d → 3d | 0% → 100% | 23d → none | constraint none → finish no earlier than 2026-10-21 |

## Version 7 (saved 2026-10-22, file PF-01_cronograma.mpp)

Note of the change: docs(cronograma): reprogramar 4.1 con la restricción no comenzar antes del 22/10/2026

Last finish stays 2026-11-26.

Changed:

| ID | Task | Start | Finish | Duration | Total float | Other |
| --- | --- | --- | --- | --- | --- | --- |
| 1 | **1 Gestión** |  | 2026-10-26 → 2026-10-29 (+3d) | 13d → 16d | 20d → 17d |  |
| 7 | 1.3 Cierre y desvíos | 2026-10-26 → 2026-10-29 (+3d) | 2026-10-26 → 2026-10-29 (+3d) |  | 20d → 17d |  |
| 8 | Listo para cierre | 2026-10-26 → 2026-10-29 (+3d) | 2026-10-26 → 2026-10-29 (+3d) |  | 20d → 17d |  |
| 19 | **4 Producto** | 2026-10-19 → 2026-10-22 (+3d) | 2026-10-23 → 2026-10-28 (+5d) |  | 20d → 17d |  |
| 20 | 4.1 Tablero Power BI | 2026-10-19 → 2026-10-22 (+3d) | 2026-10-21 → 2026-10-26 (+5d) |  | 20d → 17d | constraint none → start no earlier than 2026-10-22 |
| 21 | 4.2 Informe | 2026-10-22 → 2026-10-27 (+5d) | 2026-10-22 → 2026-10-27 (+5d) |  | 20d → 17d |  |
| 22 | 4.3 README | 2026-10-23 → 2026-10-28 (+5d) | 2026-10-23 → 2026-10-28 (+5d) |  | 20d → 17d |  |
| 23 | **5 Comunicación** | 2026-10-27 → 2026-10-30 (+3d) |  | 23d → 20d |  |  |
| 24 | 5.1 Post | 2026-10-27 → 2026-10-30 (+3d) | 2026-10-28 → 2026-11-02 (+5d) |  | 20d → 17d |  |
| 25 | 5.2 Documento PDF | 2026-10-27 → 2026-10-30 (+3d) | 2026-10-28 → 2026-11-02 (+5d) |  | 20d → 17d |  |

## Version 8 (saved 2026-10-26, file PF-01_cronograma.xml)

Note of the change: Merge pull request #53 from josecaychoa/fix/12-cronograma-eol

Last finish stays 2026-11-26. Complete tasks 12 → 15.

Changed:

| ID | Task | Start | Finish | Duration | Complete | Total float | Other |
| --- | --- | --- | --- | --- | --- | --- | --- |
| 1 | **1 Gestión** |  | 2026-10-29 → 2026-10-27 (-2d) | 16d → 14d |  | 17d → 19d |  |
| 7 | 1.3 Cierre y desvíos | 2026-10-29 → 2026-10-27 (-2d) | 2026-10-29 → 2026-10-27 (-2d) |  |  | 17d → 19d |  |
| 8 | Listo para cierre | 2026-10-29 → 2026-10-27 (-2d) | 2026-10-29 → 2026-10-27 (-2d) |  |  | 17d → 19d |  |
| 19 | **4 Producto** | 2026-10-22 A | 2026-10-28 → 2026-10-26 A (-2d) | 5d → 3d | 0% → 100% | 17d → none |  |
| 20 | 4.1 Tablero Power BI | 2026-10-22 A | 2026-10-26 A |  | 0% → 100% | 17d → none | constraint start no earlier than 2026-10-22 → finish no earlier than 2026-10-26 |
| 21 | 4.2 Informe | 2026-10-27 → 2026-10-26 A (-1d) | 2026-10-27 → 2026-10-26 A (-1d) | 1d → 0d | 0% → 100% | 17d → none |  |
| 22 | 4.3 README | 2026-10-28 → 2026-10-26 A (-2d) | 2026-10-28 → 2026-10-26 A (-2d) | 1d → 0d | 0% → 100% | 17d → none | constraint none → finish no earlier than 2026-10-27 |
| 23 | **5 Comunicación** | 2026-10-30 → 2026-10-28 (-2d) |  | 20d → 22d |  |  |  |
| 24 | 5.1 Post | 2026-10-30 → 2026-10-28 (-2d) | 2026-11-02 → 2026-10-29 (-4d) |  |  | 17d → 19d |  |
| 25 | 5.2 Documento PDF | 2026-10-30 → 2026-10-28 (-2d) | 2026-11-02 → 2026-10-29 (-4d) |  |  | 17d → 19d |  |

## Version 9 (saved 2026-10-27, file PF-01_cronograma.xml)

Note of the change: Merge pull request #54 from josecaychoa/docs/13-cierre

Last finish stays 2026-11-26. Complete tasks 15 → 16.

Changed:

| ID | Task | Start | Finish | Complete | Total float |
| --- | --- | --- | --- | --- | --- |
| 1 | **1 Gestión** |  |  | 80% → 99% |  |
| 7 | 1.3 Cierre y desvíos | 2026-10-27 → 2026-10-26 A (-1d) | 2026-10-27 A | 0% → 100% | 19d → none |

## Version 10 (saved 2026-10-30, file PF-01_cronograma.xml)

Note of the change: Merge pull request #65 from josecaychoa/docs/57-cronograma-avance-4-5

Last finish 2026-11-26 → 2026-11-12 (-14d). Complete tasks 16 → 19.

Added:

| ID | Task | Duration | Start | Finish | Predecessors |
| --- | --- | --- | --- | --- | --- |
| 23 | 4.4 Contribución por riesgo | 0d | 2026-10-27 A | 2026-10-27 A | 22 |
| 24 | 4.5 Correcciones de la auditoría | 3d | 2026-10-27 A | 2026-10-30 A | 23 |

Changed:

| ID | Task | Start | Finish | Duration | Complete | Total float | Other |
| --- | --- | --- | --- | --- | --- | --- | --- |
| 1 | **1 Gestión** |  | 2026-10-27 A |  | 99% → 100% | 19d → none |  |
| 8 | Listo para cierre | 2026-10-27 A | 2026-10-27 A |  | 0% → 100% | 19d → none |  |
| 19 | **4 Producto** |  | 2026-10-26 A → 2026-10-30 A (+4d) | 3d → 7d |  |  |  |
| 25 | **5 Comunicación** | 2026-10-28 → 2026-11-03 (+6d) | 2026-11-26 → 2026-11-12 (-14d) | 22d → 8d |  |  |  |
| 26 | 5.1 Post | 2026-10-28 → 2026-11-03 (+6d) | 2026-10-29 → 2026-11-06 (+8d) | 2d → 4d |  | 19d → 3d | constraint none → start no earlier than 2026-11-03 |
| 27 | 5.2 Documento PDF | 2026-10-28 → 2026-11-03 (+6d) | 2026-10-29 → 2026-11-06 (+8d) | 2d → 4d |  | 19d → 3d | constraint none → start no earlier than 2026-11-03 |
| 28 | Publicación en LinkedIn | 2026-11-26 → 2026-11-12 (-14d) | 2026-11-26 → 2026-11-12 (-14d) |  |  |  | constraint start no earlier than 2026-11-26 → must start on 2026-11-12 |
| 29 | 5.3 Destacados y registro | 2026-11-26 → 2026-11-12 (-14d) | 2026-11-26 → 2026-11-12 (-14d) |  |  |  | constraint none → start no earlier than 2026-11-12 |
